# OJL

Schedule from MS Project, 2008-10-06 to 2009-03-23, A marks actual dates.
蜷榊商螻句､ｧ蟄ｦ

## Calendars

- 標準: Mon-Fri 08:00-12:00, 13:00-17:00; Sat-Sun off.

## Resources

| Resource |
| --- |
| mizuno |
| yanagi |

## Schedule

| ID | WBS | Task | Duration | Start | Finish | Predecessors | Complete | Remaining | Total slack | Free slack | Constraint | Deadline | Resources | Work | Actual work |
| --- | --- | --- | --- | --- | --- | --- | --- | --- | --- | --- | --- | --- | --- | --- | --- |
| 1 | 1 | **TLV phase3** | 121d | 2008-10-06 A | 2009-03-23 |  | 72% | 33.41d | 0d |  |  |  |  | 296h | 276h |
| 2 | 1.1 | **勉強** | 32d | 2008-10-06 A | 2008-11-18 A |  | 100% |  |  |  |  |  |  |  |  |
| 3 | 1.1.1 | 組込みシステムの勉強 | 16d | 2008-10-06 A | 2008-10-27 A |  | 100% |  |  |  | finish no earlier than 2008-10-27 |  |  |  |  |
| 4 | 1.1.2 | C#の勉強 | 16d | 2008-10-28 A | 2008-11-18 A |  | 100% |  |  |  | finish no earlier than 2008-11-18 |  |  |  |  |
| 5 | 1.1.3 | TLVの勉強 | 16d | 2008-10-28 A | 2008-11-18 A |  | 100% |  |  |  | finish no earlier than 2008-11-18 |  |  |  |  |
| 6 | 1.2 | **単体テスト** | 45d | 2008-11-19 A | 2009-01-20 | 2 | 54% | 20.5d | 44d |  |  |  |  |  |  |
| 7 | 1.2.1 | リストアップ | 4d | 2008-11-19 A | 2008-11-24 A |  | 100% |  |  |  | finish no earlier than 2008-11-24 |  |  |  |  |
| 8 | 1.2.2 | 実施 | 41d | 2008-11-25 A | 2009-01-20 | 7 | 50% | 20.5d | 44d |  | start no earlier than 2008-11-25 |  |  |  |  |
| 9 | 1.3 | **システムテスト** | 46d | 2008-11-26 A | 2009-01-28 | 2 | 40% | 27.6d | 38d |  |  |  |  |  |  |
| 10 | 1.3.1 | 設計 | 4d | 2008-11-26 A | 2008-12-01 A |  | 100% |  |  |  | finish no earlier than 2008-12-01 |  |  |  |  |
| 11 | 1.3.2 | 実施 | 6d | 2009-01-21 | 2009-01-28 | 10 |  |  | 38d |  | finish no earlier than 2009-01-28 |  |  |  |  |
| 12 | 1.4 | **CPU利用率の表示検討** | 9d | 2009-02-05 A | 2009-02-17 | 29 | 72% | 2.5d | 4.5d |  | start no earlier than 2009-02-04 |  |  | 72h | 52h |
| 13 | 1.4.1 | 要求仕様書作成 | 4d | 2009-02-05 A | 2009-02-10 A |  | 100% |  |  |  |  | 2009-02-10 | mizuno | 32h | 32h |
| 14 | 1.4.2 | スクリプト言語の仕様書作成 | 5d | 2009-02-11 A | 2009-02-17 | 13 | 50% | 2.5d | 4.5d | 0d |  |  | mizuno | 40h | 20h |
| 15 | 1.5 | **CPUごとのタスク表示** | 33d | 2009-02-05 A | 2009-03-23 | 29 | 65% | 11.51d | 0d |  |  |  |  | 224h | 224h |
| 16 | 1.5.1 | スライド作成 | 4d | 2009-02-05 A | 2009-02-10 A |  | 100% |  |  |  |  | 2009-02-10 | yanagi | 32h | 32h |
| 17 | 1.5.2 | 外部仕様書作成 | 4d | 2009-02-05 A | 2009-02-10 A |  | 100% |  |  |  | must start on 2009-02-05 | 2009-02-10 | yanagi | 32h | 32h |
| 18 | 1.5.3 | 変換ルールの理解 | 5d | 2009-02-11 A | 2009-02-17 A | 17 | 100% |  |  |  | start no earlier than 2009-02-03 |  | yanagi | 40h | 40h |
| 19 | 1.5.4 | リソースファイルの理解 | 5d | 2009-02-11 A | 2009-02-17 A | 17 | 100% |  |  |  | start no earlier than 2009-01-28 |  | yanagi | 40h | 40h |
| 20 | 1.5.5 | 変換ルールの記述 | 10d | 2009-02-11 A | 2009-02-24 A | 16, 17 | 100% |  |  |  |  |  | yanagi | 80h | 80h |
| 21 | 1.5.6 | **表示のテスト** | 15d | 2009-03-03 | 2009-03-23 |  |  |  | 0d |  |  |  |  |  |  |
| 22 | 1.5.6.1 | テスト設計 | 5d | 2009-03-03 | 2009-03-09 | 18, 19, 17, 28 |  |  | 0d |  | start no earlier than 2009-01-28 |  |  |  |  |
| 23 | 1.5.6.2 | 実施 | 5d | 2009-03-10 | 2009-03-16 | 22, 20 |  |  | 0d |  |  |  |  |  |  |
| 24 | 1.5.6.3 | 修正 | 5d | 2009-03-17 | 2009-03-23 | 23 |  |  | 0d |  |  |  |  |  |  |

| ID | WBS | Task | Duration | Start | Finish | Predecessors | Complete | Remaining | Total slack | Constraint | Deadline |
| --- | --- | --- | --- | --- | --- | --- | --- | --- | --- | --- | --- |
| 25 | 1.6 | **中間報告** | 9d | 2009-02-18 A | 2009-03-02 | 14, 17 | 88% | 1.12d | 0d |  | 2009-03-02 |
| 26 | 1.6.1 | 資料作成 | 4d | 2009-02-18 A | 2009-02-23 A |  | 100% |  |  |  |  |
| 27 | 1.6.2 | 発表練習 | 3d | 2009-02-24 A | 2009-02-26 A | 26 | 100% |  |  | start no earlier than 2009-02-24 |  |
| 28 | 1.6.3 | 発表 | 1d | 2009-03-02 | 2009-03-02 | 27 |  |  | 0d | must finish on 2009-03-02 | 2009-03-02 |
| 29 | 2 | 修論中間発表 | 1d | 2009-02-04 | 2009-02-04 |  |  |  | 0d | must finish on 2009-02-04 |  |
| 30 | 3 | TOPPERS技術検討会＠東京 | 1d | 2009-02-26 | 2009-02-26 |  |  |  | 0d | must start on 2009-02-26 |  |
